# CloudBolt Project - Product Replacement Plan

Schedule from MS Project, 2022-06-10 to 2022-10-25.

## Calendars

- Standard: Mon-Fri 08:00-12:00, 13:00-17:00; Sat-Sun off.

## Resources

| Resource |
| --- |
| Management |
| Project Manager |
| Analyst |
| Developer |
| Testers |
| Trainers |
| Technical Communicators |
| Deployment Team |

## Schedule

| ID | WBS | Task | Type | Duration | Start | Finish | Predecessors | Total slack | Resources | Work |
| --- | --- | --- | --- | --- | --- | --- | --- | --- | --- | --- |
| 1 | 1 | **Scope** |  | 3.5d | 2022-06-10 | 2022-06-15 |  | 0d |  | 28h |
| 2 | 1.1 | Determine project scope |  | 4h | 2022-06-10 | 2022-06-10 |  | 0d | Management | 4h |
| 3 | 1.2 | Secure project sponsorship |  | 1d | 2022-06-10 | 2022-06-13 | 2 | 0d | Management | 8h |
| 4 | 1.3 | Define preliminary resources |  | 1d | 2022-06-13 | 2022-06-14 | 3 | 0d | Project Manager | 8h |
| 5 | 1.4 | Secure core resources |  | 1d | 2022-06-14 | 2022-06-15 | 4 | 0d | Project Manager | 8h |
| 6 | 1.5 | Scope complete | milestone | 0d | 2022-06-15 | 2022-06-15 | 5 | 0d |  |  |
| 7 | 2 | **Analysis/Software Requirements** |  | 5d? | 2022-06-15 | 2022-06-22 |  |  |  | 120h |
| 8 | 2.1 | Create product in S8/SES/Kenan |  | 5d | 2022-06-15 | 2022-06-22 | 6 | 0d | Analyst | 40h |
| 9 | 2.2 | Analyze integration possibilities |  | 1d? | 2022-06-22 | 2022-06-23 | 8 | 0d |  |  |
| 10 | 2.3 | Size the dev effort from Siebel team to integrate |  | 3d | 2022-06-23 | 2022-06-28 | 9 | 0d | Analyst | 24h |
| 11 | 2.4 | Analyze rated output data from Cloudbolt to adequate input for Kenan |  | 1d? | 2022-06-28 | 2022-06-29 | 10 | 0d |  |  |
| 12 | 2.5 | Size the dev effort from SES/Kenan to integrate |  | 2d | 2022-06-29 | 2022-07-01 | 11 | 0d | Project Manager | 16h |
| 13 | 2.6 | CloudBolt for Google |  | 4h | 2022-07-01 | 2022-07-01 | 12 | 0d | Project Manager; Analyst | 8h |
| 14 | 2.7 | Incorporate feedback on software specifications |  | 1d | 2022-07-04 | 2022-07-04 | 13 | 0d | Analyst | 8h |
| 15 | 2.8 | Develop delivery timeline |  | 1d | 2022-07-05 | 2022-07-05 | 14 | 0d | Project Manager | 8h |
| 16 | 2.9 | Obtain approvals to proceed (concept, timeline, budget) |  | 4h | 2022-07-06 | 2022-07-06 | 15 | 0d | Management; Project Manager | 8h |
| 17 | 2.10 | Secure required resources |  | 1d | 2022-07-06 | 2022-07-07 | 16 | 0d | Project Manager | 8h |
| 18 | 2.11 | Analysis complete | milestone | 0d | 2022-07-07 | 2022-07-07 | 17 | 0d |  |  |
| 19 | 3 | **Design** |  | 6d | 2022-07-07 | 2022-07-15 |  |  |  | 120h |
| 20 | 3.1 | Review preliminary software specifications |  | 2d | 2022-07-07 | 2022-07-11 | 18 | 0d | Analyst | 16h |
| 21 | 3.2 | Develop functional specifications |  | 5d | 2022-07-11 | 2022-07-18 | 20 | 0d | Analyst | 40h |
| 22 | 3.3 | Develop prototype based on functional specifications |  | 4d | 2022-07-18 | 2022-07-22 | 21 | 0d | Analyst | 32h |
| 23 | 3.4 | Review functional specifications |  | 2d | 2022-07-22 | 2022-07-26 | 22 | 0d | Management | 16h |
| 24 | 3.5 | Incorporate feedback into functional specifications |  | 1d | 2022-07-26 | 2022-07-27 | 23 | 0d | Management | 8h |
| 25 | 3.6 | Obtain approval to proceed |  | 4h | 2022-07-27 | 2022-07-27 | 24 | 0d | Management; Project Manager | 8h |
| 26 | 3.7 | Design complete | milestone | 0d | 2022-07-27 | 2022-07-27 | 25 | 0d |  |  |

| ID | WBS | Task | Type | Duration | Start | Finish | Predecessors | Total slack | Free slack | Resources | Work |
| --- | --- | --- | --- | --- | --- | --- | --- | --- | --- | --- | --- |
| 27 | 4 | **Development** |  | 15d | 2022-07-28 | 2022-08-17 |  |  |  |  | 264h |
| 28 | 4.1 | Review functional specifications |  | 1d | 2022-07-28 | 2022-07-28 | 26 | 0d |  | Developer | 8h |
| 29 | 4.2 | Identify modular/tiered design parameters |  | 1d | 2022-07-29 | 2022-07-29 | 28 | 0d |  | Developer | 8h |
| 30 | 4.3 | Assign development staff |  | 1d | 2022-08-01 | 2022-08-01 | 29 | 0d |  | Developer | 8h |
| 31 | 4.4 | Develop code |  | 15d | 2022-08-02 | 2022-08-22 | 30 | 0d |  | Developer | 120h |
| 32 | 4.5 | Developer testing (primary debugging) |  | 15d | 2022-08-05 | 2022-08-26 | 31FS-7.5% | 0d |  | Developer | 120h |
| 33 | 4.6 | Development complete | milestone | 0d | 2022-08-26 | 2022-08-26 | 32 | 0d |  |  |  |
| 34 | 5 | **Testing** |  | 3d | 2022-07-28 | 2022-08-01 |  |  |  |  | 280h |
| 35 | 5.1 | Develop unit test plans using product specifications |  | 4d | 2022-07-28 | 2022-08-02 | 26 | 17.75d |  | Testers | 32h |
| 36 | 5.2 | Develop integration test plans using product specifications |  | 4d | 2022-07-28 | 2022-08-02 | 26 | 59.75d |  | Testers | 32h |
| 37 | 5.3 | **Unit Testing** |  | 15d | 2022-08-26 | 2022-09-16 |  | 0d |  |  | 120h |
| 38 | 5.3.1 | Review modular code |  | 5d | 2022-08-26 | 2022-09-02 | 35, 33 | 0d |  | Testers | 40h |
| 39 | 5.3.2 | Test component modules to product specifications |  | 2d | 2022-09-02 | 2022-09-06 | 33, 38 | 0d |  | Testers | 16h |
| 40 | 5.3.3 | Identify anomalies to product specifications |  | 3d | 2022-09-06 | 2022-09-09 | 39 | 0d |  | Testers | 24h |
| 41 | 5.3.4 | Modify code |  | 3d | 2022-09-09 | 2022-09-14 | 40 | 0d |  | Testers | 24h |
| 42 | 5.3.5 | Re-test modified code |  | 2d | 2022-09-14 | 2022-09-16 | 41 | 0d |  | Testers | 16h |
| 43 | 5.3.6 | Unit testing complete | milestone | 0d | 2022-09-16 | 2022-09-16 | 42 | 0d |  |  |  |
| 44 | 5.4 | **Integration Testing** |  | 12d | 2022-09-16 | 2022-10-04 |  | 0d |  |  | 96h |
| 45 | 5.4.1 | Test module integration |  | 5d | 2022-09-16 | 2022-09-23 | 43 | 0d |  | Testers | 40h |
| 46 | 5.4.2 | Identify anomalies to specifications |  | 2d | 2022-09-23 | 2022-09-27 | 45 | 0d |  | Testers | 16h |
| 47 | 5.4.3 | Modify code |  | 3d | 2022-09-27 | 2022-09-30 | 46 | 0d |  | Testers | 24h |
| 48 | 5.4.4 | Re-test modified code |  | 2d | 2022-09-30 | 2022-10-04 | 47 | 0d |  | Testers | 16h |
| 49 | 5.4.5 | Integration testing complete | milestone | 0d | 2022-10-04 | 2022-10-04 | 48 | 0d |  |  |  |
| 50 | 6 | **Training** |  | 45.75d | 2022-07-28 | 2022-09-29 |  | 3d |  |  | 256h |
| 51 | 6.1 | Develop training specifications for end users |  | 3d | 2022-07-28 | 2022-08-01 | 26 | 21.75d | 18.75d | Trainers | 24h |
| 52 | 6.2 | Develop training specifications for helpdesk support staff |  | 3d | 2022-07-28 | 2022-08-01 | 26 | 21.75d | 18.75d | Trainers | 24h |
| 53 | 6.3 | Identify training delivery methodology (computer based training, classroom, etc.) |  | 2d | 2022-07-28 | 2022-07-29 | 26 | 22.75d | 19.75d | Trainers | 16h |
| 54 | 6.4 | Develop training materials |  | 3w | 2022-08-26 | 2022-09-16 | 51, 33, 52, 53 | 3d | 0d | Trainers | 120h |
| 55 | 6.5 | Conduct training usability study |  | 4d | 2022-09-16 | 2022-09-22 | 54 | 3d | 0d | Trainers | 32h |
| 56 | 6.6 | Finalize training materials |  | 3d | 2022-09-22 | 2022-09-27 | 55 | 3d | 0d | Trainers | 24h |
| 57 | 6.7 | Develop training delivery mechanism |  | 2d | 2022-09-27 | 2022-09-29 | 56 | 3d | 0d | Trainers | 16h |
| 58 | 6.8 | Training materials complete | milestone | 0d | 2022-09-29 | 2022-09-29 | 57 | 3d |  |  |  |

| ID | WBS | Task | Type | Duration | Start | Finish | Predecessors | Total slack | Free slack | Resources | Work |
| --- | --- | --- | --- | --- | --- | --- | --- | --- | --- | --- | --- |
| 59 | 7 | **Documentation** |  | 30.5d | 2022-07-28 | 2022-09-08 |  | 18.25d |  |  | 336h |
| 60 | 7.1 | Develop Help specification |  | 1d | 2022-07-28 | 2022-07-28 | 26 | 27.75d | 9.5d | Technical Communicators | 8h |
| 61 | 7.2 | Develop Help system |  | 3w | 2022-08-11 | 2022-09-01 | 60, 31FS-5% | 18.25d | 0d | Technical Communicators | 120h |
| 62 | 7.3 | Review Help documentation |  | 3d | 2022-09-01 | 2022-09-06 | 61 | 18.25d | 0d | Technical Communicators | 24h |
| 63 | 7.4 | Incorporate Help documentation feedback |  | 2d | 2022-09-06 | 2022-09-08 | 62 | 18.25d | 0d | Technical Communicators | 16h |
| 64 | 7.5 | Develop user manuals specifications |  | 2d | 2022-07-28 | 2022-07-29 | 26 | 27.75d | 8.5d | Technical Communicators | 16h |
| 65 | 7.6 | Develop user manuals |  | 3w | 2022-08-11 | 2022-09-01 | 64, 31FS-5% | 19.25d | 0d | Technical Communicators | 120h |
| 66 | 7.7 | Review all user documentation |  | 2d | 2022-09-01 | 2022-09-05 | 65 | 19.25d | 0d | Technical Communicators | 16h |
| 67 | 7.8 | Incorporate user documentation feedback |  | 2d | 2022-09-05 | 2022-09-07 | 66 | 19.25d | 1d | Technical Communicators | 16h |
| 68 | 7.9 | Documentation complete | milestone | 0d | 2022-09-08 | 2022-09-08 | 67, 63 | 18.25d |  |  |  |
| 69 | 8 | **Pilot** |  | 70.25d | 2022-07-07 | 2022-10-13 |  | 0d |  |  | 64h |
| 70 | 8.1 | Identify test group |  | 1d | 2022-07-07 | 2022-07-08 | 18 | 61.25d | 0d | Project Manager | 8h |
| 71 | 8.2 | Develop software delivery mechanism |  | 1d | 2022-07-08 | 2022-07-11 | 70 | 61.25d |  |  |  |
| 72 | 8.3 | Install/deploy software |  | 1d | 2022-10-04 | 2022-10-05 | 49, 71, 68, 58 | 0d |  | Deployment Team | 8h |
| 73 | 8.4 | Obtain user feedback |  | 1w | 2022-10-05 | 2022-10-12 | 72 | 0d |  | Deployment Team | 40h |
| 74 | 8.5 | Evaluate testing information |  | 1d | 2022-10-12 | 2022-10-13 | 73 | 0d |  | Deployment Team | 8h |
| 75 | 8.6 | Pilot complete | milestone | 0d | 2022-10-13 | 2022-10-13 | 74 | 0d |  |  |  |
| 76 | 9 | **Deployment** |  | 5d | 2022-10-13 | 2022-10-20 |  | 0d |  |  | 40h |
| 77 | 9.1 | Determine final deployment strategy |  | 1d | 2022-10-13 | 2022-10-14 | 75 | 0d |  | Deployment Team | 8h |
| 78 | 9.2 | Develop deployment methodology |  | 1d | 2022-10-14 | 2022-10-17 | 77 | 0d |  | Deployment Team | 8h |
| 79 | 9.3 | Secure deployment resources |  | 1d | 2022-10-17 | 2022-10-18 | 78 | 0d |  | Deployment Team | 8h |
| 80 | 9.4 | Train support staff |  | 1d | 2022-10-18 | 2022-10-19 | 79 | 0d |  | Deployment Team | 8h |
| 81 | 9.5 | Deploy software |  | 1d | 2022-10-19 | 2022-10-20 | 80 | 0d |  | Deployment Team | 8h |
| 82 | 9.6 | Deployment complete | milestone | 0d | 2022-10-20 | 2022-10-20 | 81 | 0d |  |  |  |

| ID | WBS | Task | Type | Duration | Start | Finish | Predecessors | Total slack | Resources | Work |
| --- | --- | --- | --- | --- | --- | --- | --- | --- | --- | --- |
| 83 | 10 | **Post Implementation Review** |  | 3d | 2022-10-20 | 2022-10-25 |  | 0d |  | 24h |
| 84 | 10.1 | Document lessons learned |  | 1d | 2022-10-20 | 2022-10-21 | 82 | 0d | Project Manager | 8h |
| 85 | 10.2 | Distribute to team members |  | 1d | 2022-10-21 | 2022-10-24 | 84 | 0d | Project Manager | 8h |
| 86 | 10.3 | Create software maintenance team |  | 1d | 2022-10-24 | 2022-10-25 | 85 | 0d | Project Manager | 8h |
| 87 | 10.4 | Post implementation review complete | milestone | 0d | 2022-10-25 | 2022-10-25 | 86 | 0d |  |  |
| 88 | 11 | Software development template complete | milestone | 0d | 2022-10-25 | 2022-10-25 | 87 | 0d |  |  |
